# ДЕМО-ПЛАН. Поставка функционала на промышленный контур

Schedule from MS Project XML, 2026-08-03 to 2026-11-20, status date 2026-09-18, A marks actual dates.

## Resources

| Resource |
| --- |
| Аналитик |
| Группа поддержки |
| Инженер НТ |
| Инженер сопровождения |
| Команда внедрения |
| Команда разработки |
| Приёмочная комиссия |
| Руководитель проекта |
| Служба ИБ |
| Тест-лид |
| Технический писатель |

## Schedule

| ID | WBS | Task | Type | Duration | Start | Finish | Predecessors | Complete | Total slack | Resources |
| --- | --- | --- | --- | --- | --- | --- | --- | --- | --- | --- |
| 1 | 1 | **Контур поставки** |  | 80d | 2026-08-03 A | 2026-11-20 |  | 35% | 0d |  |
| 2 | 1.1 | Анонсирована поставка релиза 4.2 | milestone | 2d | 2026-08-03 A | 2026-08-04 |  | 100% | 0d | Руководитель проекта |
| 3 | 1.2 | Скрининг в ИБ |  | 5d | 2026-08-05 A | 2026-08-11 | 2 | 100% | 0d | Служба ИБ |
| 4 | 1.3 | Развертывание поставки на предпрод |  | 2d | 2026-08-12 A | 2026-08-13 | 3 | 100% | 0d | Инженер сопровождения |
| 5 | 1.4 | Тестирование функционала расчёта тарифов |  | 10d | 2026-08-14 A | 2026-08-27 | 4 | 80% | 0d | Тест-лид |
| 6 | 1.5 | Исправлены дефекты по итогам тестирования |  | 10d | 2026-08-28 A | 2026-09-10 | 5 | 40% | 0d | Команда разработки |
| 7 | 1.6 | Тестирование Е2Е |  | 7d | 2026-09-11 | 2026-09-21 | 6 |  | 0d | Тест-лид |
| 8 | 1.7 | Согласованы артефакты для проведения ПСИ | milestone | 1d | 2026-09-22 | 2026-09-22 | 7 |  | 2d | Аналитик |
| 9 | 1.8 | Проведено ПСИ |  | 10d | 2026-09-23 | 2026-10-06 | 8 |  | 0d | Приёмочная комиссия |
| 10 | 1.9 | Согласованы ЗНИ релиза |  | 10d | 2026-10-07 | 2026-10-20 | 9 |  | 0d | Руководитель проекта |
| 11 | 1.10 | Выполнены релизы ИС (вывод в пром) |  | 3d | 2026-10-21 | 2026-10-23 | 10 |  | 0d | Инженер сопровождения |
| 12 | 1.11 | Тиражирование на региональные площадки |  | 20d | 2026-10-26 | 2026-11-20 | 11 |  | 0d | Команда внедрения |
| 13 | 1.12 | Вывод на ПРОМ завершён | milestone | 1d | 2026-11-20 | 2026-11-20 | 12 |  | 0d | Руководитель проекта |
| 14 | 2 | **Сопутствующие работы** |  | 70d | 2026-08-10 A | 2026-11-13 |  | 20% | 12d |  |
| 15 | 2.1 | Подготовка инструкций пользователя |  | 10d | 2026-08-10 A | 2026-08-21 |  | 60% | 25d | Технический писатель |
| 16 | 2.2 | Обучение группы поддержки |  | 10d | 2026-10-26 | 2026-11-06 | 15 |  | 12d | Группа поддержки |
| 17 | 2.3 | Нагрузочное тестирование контура |  | 20d | 2026-09-28 | 2026-10-23 | 4FF |  | 18d | Инженер НТ |
| 18 | 2.4 | Настройка дашбордов мониторинга |  | 10d | 2026-11-02 | 2026-11-13 | 11SS |  | 9d | Аналитик |
